# 小Q智联APP V2.0

How a schedule from a web Gantt chart changed from version to version. A marks actual dates.

## Version 1 (saved 2024-07-12)

| ID | WBS | Task | Duration | Start | Finish | Predecessors |
| --- | --- | --- | --- | --- | --- | --- |
| 2 | 1 | **设计与开发** | 25d | 2024-07-12 | 2024-08-09 |  |
| 3 |  | UI、表结构设计与后台框架整理 | 3d | 2024-07-12 | 2024-07-15 |  |
| 4 | 2 | **学校场景** | 22d | 2024-07-17 | 2024-08-11 |  |
| 5 |  | 员工管理 | 3d | 2024-07-17 | 2024-07-19 | 3 |
| 6 |  | 学生管理 | 3d | 2024-07-22 | 2024-07-24 | 5 |
| 7 |  | 设备管理 | 1d | 2024-07-25 | 2024-07-25 | 6 |
| 8 |  | 通行时间 | 2d | 2024-07-26 | 2024-07-28 | 7 |
| 9 |  | 通行规则 | 3d | 2024-07-30 | 2024-08-01 | 8 |
| 10 |  | 首页处理 | 2d | 2024-08-02 | 2024-08-04 | 9 |
| 11 |  | 支付相关 | 3d | 2024-08-06 | 2024-08-08 | 10 |
| 12 |  | 联调与测试 | 5d | 2024-08-09 | 2024-08-14 | 11 |
| 13 | 3 | **社区场景** | 18d | 2024-08-16 | 2024-09-05 |  |
| 14 |  | 房屋管理 | 3d | 2024-08-16 | 2024-08-19 | 12 |
| 15 |  | 员工管理 | 2d | 2024-08-21 | 2024-08-22 | 14 |
| 16 |  | 住户管理 | 2d | 2024-08-23 | 2024-08-25 | 15 |
| 17 |  | 设备管理 | 1d | 2024-08-27 | 2024-08-27 | 16 |
| 18 |  | 通行时间 | 2d | 2024-08-28 | 2024-08-29 | 17 |
| 19 |  | 通行规则 | 2d | 2024-08-30 | 2024-09-01 | 18 |
| 20 |  | 首页处理 | 1d | 2024-09-03 | 2024-09-03 | 19 |
| 21 |  | 联调与测试 | 5d | 2024-09-04 | 2024-09-09 | 20 |
| 22 | 4 | **通用场景** | 10d | 2024-09-11 | 2024-09-22 |  |
| 23 |  | 人员管理 | 1d | 2024-09-11 | 2024-09-11 | 21 |
| 24 |  | 设备管理 | 1d | 2024-09-12 | 2024-09-12 | 23 |
| 25 |  | 通行时间 | 1d | 2024-09-13 | 2024-09-13 | 24 |
| 26 |  | 通行规则 | 1d | 2024-09-16 | 2024-09-16 | 25 |
| 27 |  | 首页处理 | 1d | 2024-09-17 | 2024-09-17 | 26 |
| 28 |  | 联调与测试 | 5d | 2024-09-18 | 2024-09-23 | 27 |
| 29 |  | 整体测试与BUG修复 | 3d | 2024-09-25 | 2024-09-27 | 28 |
| 30 |  | 生产环境发布 | 1d | 2024-09-30 | 2024-09-30 | 29 |

## Version 2 (saved 2024-07-12)

Last finish stays 2024-09-30.

Added:

| ID | Task | Duration | Start | Finish |
| --- | --- | --- | --- | --- |
| 2 | **设计** | 25d | 2024-07-12 | 2024-08-15 |

Removed: 2 设计与开发

Changed:

| ID | Task | Finish |
| --- | --- | --- |
| 3 | UI、表结构设计与后台框架整理 | 2024-07-15 → 2024-07-16 (+1d) |
| 4 | **学校场景** | 2024-08-11 → 2024-08-15 (+4d) |
| 8 | 通行时间 | 2024-07-28 → 2024-07-29 (+1d) |
| 10 | 首页处理 | 2024-08-04 → 2024-08-05 (+1d) |
| 12 | 联调与测试 | 2024-08-14 → 2024-08-15 (+1d) |
| 13 | **社区场景** | 2024-09-05 → 2024-09-10 (+5d) |
| 14 | 房屋管理 | 2024-08-19 → 2024-08-20 (+1d) |
| 16 | 住户管理 | 2024-08-25 → 2024-08-26 (+1d) |
| 19 | 通行规则 | 2024-09-01 → 2024-09-02 (+1d) |
| 21 | 联调与测试 | 2024-09-09 → 2024-09-10 (+1d) |
| 22 | **通用场景** | 2024-09-22 → 2024-09-24 (+2d) |
| 28 | 联调与测试 | 2024-09-23 → 2024-09-24 (+1d) |

## Version 3 (saved 2024-07-15)

Last finish 2024-09-30 → 2024-10-29 (+29d).

Added:

| ID | Task | Duration | Start | Finish | Predecessors |
| --- | --- | --- | --- | --- | --- |
| 30 | 第一轮测试与BUG修复 | 5d | 2024-10-08 | 2024-10-14 |  |
| 31 | 第二轮测试与BUG修复 | 5d | 2024-10-15 | 2024-10-21 | 30 |
| 32 | 第三轮测试与BUG修复 | 5d | 2024-10-22 | 2024-10-28 | 31 |
| 33 | 生产环境发布与验证 | 1d | 2024-10-29 | 2024-10-29 | 32 |

Removed: 30 生产环境发布

Changed:

| ID | Task | Start | Finish | Duration | Predecessors |
| --- | --- | --- | --- | --- | --- |
| 4 | **学校场景** |  | 2024-08-15 → 2024-08-22 (+7d) | 22d → 27d |  |
| 5 | 员工管理 |  | 2024-07-19 → 2024-07-22 (+3d) | 3d → 4d |  |
| 6 | 学生管理 | 2024-07-22 → 2024-07-23 (+1d) | 2024-07-24 → 2024-07-26 (+2d) | 3d → 4d |  |
| 7 | 设备管理 | 2024-07-25 → 2024-07-29 (+4d) | 2024-07-25 → 2024-07-30 (+5d) | 1d → 2d |  |
| 8 | 通行时间 | 2024-07-26 → 2024-07-31 (+5d) | 2024-07-29 → 2024-08-02 (+4d) | 2d → 3d |  |
| 9 | 通行规则 | 2024-07-30 → 2024-08-05 (+6d) | 2024-08-01 → 2024-08-07 (+6d) |  |  |
| 10 | 首页处理 | 2024-08-02 → 2024-08-08 (+6d) | 2024-08-05 → 2024-08-09 (+4d) |  |  |
| 11 | 支付相关 | 2024-08-06 → 2024-08-12 (+6d) | 2024-08-08 → 2024-08-15 (+7d) | 3d → 4d |  |
| 12 | 联调与测试 | 2024-08-09 → 2024-08-16 (+7d) | 2024-08-15 → 2024-08-22 (+7d) |  |  |
| 13 | **社区场景** | 2024-08-16 → 2024-08-23 (+7d) | 2024-09-10 → 2024-09-20 (+10d) | 18d → 21d |  |
| 14 | 房屋管理 | 2024-08-16 → 2024-08-23 (+7d) | 2024-08-20 → 2024-08-28 (+8d) | 3d → 4d |  |
| 15 | 员工管理 | 2024-08-21 → 2024-08-29 (+8d) | 2024-08-22 → 2024-09-02 (+11d) | 2d → 3d |  |
| 16 | 住户管理 | 2024-08-23 → 2024-09-03 (+11d) | 2024-08-26 → 2024-09-05 (+10d) | 2d → 3d |  |
| 17 | 设备管理 | 2024-08-27 → 2024-09-06 (+10d) | 2024-08-27 → 2024-09-06 (+10d) |  |  |
| 18 | 通行时间 | 2024-08-28 → 2024-09-09 (+12d) | 2024-08-29 → 2024-09-10 (+12d) |  |  |
| 19 | 通行规则 | 2024-08-30 → 2024-09-11 (+12d) | 2024-09-02 → 2024-09-12 (+10d) |  |  |
| 20 | 首页处理 | 2024-09-03 → 2024-09-13 (+10d) | 2024-09-03 → 2024-09-16 (+13d) | 1d → 2d |  |
| 21 | 联调与测试 | 2024-09-04 → 2024-09-17 (+13d) | 2024-09-10 → 2024-09-20 (+10d) | 5d → 4d |  |
| 22 | **通用场景** | 2024-09-11 → 2024-09-23 (+12d) | 2024-09-24 → 2024-09-30 (+6d) | 10d → 6d |  |
| 23 | 人员管理 | 2024-09-11 → 2024-09-23 (+12d) | 2024-09-11 → 2024-09-23 (+12d) |  |  |
| 24 | 设备管理 | 2024-09-12 → 2024-09-24 (+12d) | 2024-09-12 → 2024-09-24 (+12d) |  |  |
| 25 | 通行时间 | 2024-09-13 → 2024-09-25 (+12d) | 2024-09-13 → 2024-09-25 (+12d) |  |  |
| 26 | 通行规则 | 2024-09-16 → 2024-09-26 (+10d) | 2024-09-16 → 2024-09-26 (+10d) |  |  |
| 27 | 首页处理 | 2024-09-17 → 2024-09-27 (+10d) | 2024-09-17 → 2024-09-27 (+10d) |  |  |
| 28 | 联调与测试 | 2024-09-18 → 2024-09-30 (+12d) | 2024-09-24 → 2024-09-30 (+6d) | 5d → 1d |  |
| 29 | **整体测试与BUG修复** | 2024-09-25 → 2024-10-08 (+13d) | 2024-09-27 → 2024-10-28 (+31d) | 3d → 15d | 28 → none |
