# 小Q智联

How a schedule from a web Gantt chart changed from version to version. A marks actual dates.

## Version 1 (saved 2025-01-04)

| ID | WBS | Task | Duration | Start | Finish | Predecessors |
| --- | --- | --- | --- | --- | --- | --- |
| 2 | 1 | **需求** | 10d | 2023-10-23 | 2023-11-03 |  |
| 3 |  | 需求分析与原型设计 | 7d | 2023-10-23 | 2023-10-31 |  |
| 4 |  | 原型评审与修订 | 3d | 2023-11-01 | 2023-11-03 | 3 |
| 5 | 2 | **设计** | 14d | 2023-11-06 | 2023-11-23 |  |
| 6 |  | SIP服务器选型与接口调试 | 3d | 2023-11-06 | 2023-11-08 | 4 |
| 7 |  | MQTT协议制定与评审 | 4d | 2023-11-09 | 2023-11-14 | 6 |
| 8 |  | 数据库设计 | 3d | 2023-11-15 | 2023-11-17 | 7 |
| 9 |  | 整体技术框架搭建 | 4d | 2023-11-20 | 2023-11-23 | 8 |
| 10 | 3 | **开发与联调** | 48d | 2023-11-24 | 2024-01-30 |  |
| 11 |  | 登录、添加设备、配网 | 3d | 2023-11-24 | 2023-11-28 | 9 |
| 12 |  | 团队配置 | 1d | 2023-11-29 | 2023-11-29 | 11 |
| 13 |  | 首页 | 2d | 2023-11-30 | 2023-12-01 | 12 |
| 14 |  | 设备管理 | 2d | 2023-12-04 | 2023-12-05 | 13 |
| 15 |  | 人员管理 | 4d | 2023-12-06 | 2023-12-11 | 14 |
| 16 |  | 通行规则 | 2d | 2023-12-12 | 2023-12-13 | 15 |
| 17 |  | 访客预约 | 3d | 2023-12-14 | 2023-12-18 | 16 |
| 18 |  | 可视对讲 | 3d | 2023-12-19 | 2023-12-21 | 17 |
| 19 |  | 通行记录 | 2d | 2023-12-22 | 2023-12-25 | 18 |
| 20 |  | 开门 | 2d | 2023-12-26 | 2023-12-27 | 19 |
| 21 |  | 通知 | 3d | 2023-12-28 | 2024-01-01 | 20 |
| 22 |  | 我的 | 2d | 2024-01-02 | 2024-01-03 | 21 |
| 23 |  | 对讲 | 3d | 2024-01-04 | 2024-01-08 | 22 |
| 24 |  | 后台与APP端联调 | 9d | 2024-01-09 | 2024-01-19 | 23 |
| 25 |  | 与设备端联调 | 7d | 2024-01-22 | 2024-01-30 | 24 |
| 26 | 4 | **测试** | 17d | 2024-02-01 | 2024-02-23 |  |
| 27 |  | 首轮测试与BUG修复 | 6d | 2024-02-01 | 2024-02-08 |  |
| 28 |  | 第二轮测试与BUG修复 | 5d | 2024-02-19 | 2024-02-23 |  |
| 29 | 5 | **发布** | 6d | 2024-02-19 | 2024-02-26 |  |
| 30 |  | 文档准备 | 5d | 2024-02-19 | 2024-02-23 |  |
| 31 |  | 生产环境部署 | 1d | 2024-02-26 | 2024-02-26 | 28 |

## Version 2 (saved 2025-01-04)

Last finish 2024-02-26 → 2025-04-04 (+403d).

Added:

| ID | Task | Duration | Start | Finish | Predecessors |
| --- | --- | --- | --- | --- | --- |
| 6 | MQTT协议设计与评审 | 3d | 2025-01-07 | 2025-01-09 | 4 |
| 7 | 公众号H5与WEB端构架与UI选型 | 1d | 2025-01-10 | 2025-01-10 | 6 |
| 9 | 整体技术框架搭建(前后端） | 2d | 2025-01-14 | 2025-01-15 | 8 |
| 11 | **服务商前后端开发（Web）** | 20d | 2025-01-16 | 2025-02-07 |  |
| 12 | 首页看板 | 3d | 2025-01-16 | 2025-01-18 | 9 |
| 13 | 配置：学校、话机、套餐管理 | 3d | 2025-01-20 | 2025-01-22 | 12 |
| 14 | 数据：学生注册、交易流水、通话记录 | 2d | 2025-01-23 | 2025-01-24 | 13 |
| 15 | 春节放假 | 9d | 2025-01-25 | 2025-02-04 | 14 |
| 16 | 统计分析：收入统计、学生注册统计、设备通话统计 | 3d | 2025-02-05 | 2025-02-07 | 15 |
| 17 | **平台管理前后端开发（Web）** | 5d | 2025-02-08 | 2025-02-13 |  |
| 18 | 首页看板 | 3d | 2025-02-08 | 2025-02-11 | 16 |
| 19 | 服务商管理 | 2d | 2025-02-12 | 2025-02-13 | 18 |
| 20 | **公众号、小程序与家长端（H5）开发** | 21d | 2025-02-14 | 2025-03-10 |  |
| 21 | 公众号页 面开发 | 1d | 2025-02-14 | 2025-02-14 | 19 |
| 22 | 家长登录与 注册、购买套餐 | 3d | 2025-02-15 | 2025-02-18 | 21 |
| 23 | 跳转小程序授权设备组 | 2d | 2025-02-19 | 2025-02-20 | 22 |
| 24 | 小程序呼叫接听业务逻辑秘界面处理 | 3d | 2025-02-21 | 2025-02-24 | 23 |
| 25 | 家长首页 | 2d | 2025-02-25 | 2025-02-26 | 24 |
| 26 | 留言 | 3d | 2025-02-27 | 2025-03-01 | 25 |
| 27 | 联系人管理 | 2d | 2025-03-03 | 2025-03-04 | 26 |
| 28 | 已购套餐管理 | 2d | 2025-03-05 | 2025-03-06 | 27 |
| 29 | 通话记录 | 1d | 2025-03-07 | 2025-03-07 | 28 |
| 30 | 学生信息管理 | 1d | 2025-03-08 | 2025-03-08 | 29 |
| 31 | 我的信息管理 | 1d | 2025-03-10 | 2025-03-10 | 30 |
| 32 | 后台与前端联调 | 5d | 2025-03-11 | 2025-03-15 | 31 |

Removed: 6 SIP服务器选型与接口调试; 7 MQTT协议制定与评审; 9 整体技术框架搭建; 11 登录、添加设备、配网; 12 团队配置; 13 首页; 14 设备管理; 15 人员管理; 16 通行规则; 17 访客预约; 18 可视对讲; 19 通行记录; 20 开门; 21 通知; 22 我的; 23 对讲; 24 后台与APP端联调; 30 文档准备

Changed:

| ID | Task | Start | Finish | Duration | Predecessors |
| --- | --- | --- | --- | --- | --- |
| 2 | **需求** | 2023-10-23 → 2024-12-23 (+427d) | 2023-11-03 → 2025-01-03 (+427d) | 10d → 11d |  |
| 3 | 需求分析与原型设计 | 2023-10-23 → 2024-12-23 (+427d) | 2023-10-31 → 2024-12-27 (+423d) | 7d → 5d |  |
| 4 | 原型评审与修订 | 2023-11-01 → 2024-12-30 (+425d) | 2023-11-03 → 2025-01-04 (+428d) | 3d → 6d |  |
| 5 | **设计** | 2023-11-06 → 2025-01-07 (+428d) | 2023-11-23 → 2025-01-15 (+419d) | 14d → 8d |  |
| 8 | 数据库设计 | 2023-11-15 → 2025-01-11 (+423d) | 2023-11-17 → 2025-01-13 (+423d) | 3d → 2d | MQTT协议制定与评审 → 7 |
| 10 | **开发与联调** | 2023-11-24 → 2025-01-16 (+419d) | 2024-01-30 → 2025-03-24 (+419d) | 48d → 58d |  |
| 33 | 与设备端联调 | 2024-01-22 → 2025-03-17 (+420d) | 2024-01-30 → 2025-03-24 (+419d) |  | 后台与APP端联调 → 32 |
| 34 | **测试** | 2024-02-01 → 2025-03-25 (+418d) | 2024-02-23 → 2025-04-04 (+406d) | 17d → 10d |  |
| 35 | 首轮测试与BUG修复 | 2024-02-01 → 2025-03-25 (+418d) | 2024-02-08 → 2025-03-29 (+415d) | 6d → 5d | none → 33 |
| 36 | 第二轮测试与BUG修复 | 2024-02-19 → 2025-03-31 (+406d) | 2024-02-23 → 2025-04-04 (+406d) |  | none → 35 |
| 37 | **发布** | 2024-02-19 → 2025-04-03 (+409d) | 2024-02-26 → 2025-04-04 (+403d) | 6d → 2d |  |
| 38 | 生产环境部署 | 2024-02-26 → 2025-04-04 (+403d) | 2024-02-26 → 2025-04-04 (+403d) |  | 36 → none |
